# caMOD 2.2

Schedule from MS Project, 2007-09-28 to 2008-06-17.
SAIC

## Calendars

- Standard: Mon-Fri 08:00-12:00, 13:00-17:00; Sat-Sun off.

## Resources

| Resource |
| --- |
| GuruswamiS |
| NCICB |
| Anand |
| Ulli |
| QA |
| Sima |
| DBA |
| 2nd Resource |
| Sima |
| Srini |
| Grid Resource |
| App Support |
| Systems |
| Jill |

## Schedule

| ID | WBS | Task | Type | Duration | Start | Finish | Predecessors | Total slack | Free slack | Resources | Work |
| --- | --- | --- | --- | --- | --- | --- | --- | --- | --- | --- | --- |
| 1 | 1 | **caMOD 2.4 Release** |  | 188d | 2007-09-28 | 2008-06-17 |  | 0d |  |  | 2622h |
| 2 | 1.1 | **Inception Phase** |  | 16d | 2007-09-28 | 2007-10-19 |  | 55d |  |  | 48h |
| 3 | 1.1.1 | Use Case and Design Doc (caBIG template) |  | 2w | 2007-09-28 | 2007-10-11 |  | 21d | 0d | Sima [50%] | 40h |
| 4 | 1.1.2 | Review use cases / design with the "Review Board" |  | 6d | 2007-10-12 | 2007-10-19 | 3 | 21d | 0d | Sima | 8h |
| 5 | 1.2 | Milestone: Completed Design document | milestone | 0d | 2007-10-19 | 2007-10-19 | 4 | 21d | 0d | Anand |  |
| 6 | 1.3 | **Elaboration Phase** |  | 21d | 2007-10-22 | 2007-11-19 |  | 55d |  |  | 168h |
| 7 | 1.3.1 | Incorporate changes to the Object Model |  | 2d | 2007-10-22 | 2007-10-23 | 5 | 21d | 0d | Ulli | 16h |
| 8 | 1.3.2 | Make code changes due to Object Model changes |  | 5d | 2007-10-24 | 2007-10-30 | 7 | 21d | 0d | Sima | 40h |
| 9 | 1.3.3 | Milestone: Soft Freeze Object Model |  | 2d | 2007-10-31 | 2007-11-01 | 8 | 21d | 0d | Sima | 16h |
| 10 | 1.3.4 | Round Trip, Import XMI into EA |  | 2d | 2007-11-02 | 2007-11-05 | 9 | 21d | 0d | Ulli | 16h |
| 11 | 1.3.5 | Register Model in caDSR |  | 10d | 2007-11-06 | 2007-11-19 | 10 | 21d |  | Ulli | 80h |
| 12 | 1.4 | Milestone: Model Registered in CADSR | milestone | 0d | 2007-09-28 | 2007-09-28 |  | 58d |  |  |  |
| 13 | 1.5 | **iteration 1:** |  | 188d | 2007-09-28 | 2008-06-17 |  | 0d |  |  | 2406h |
| 14 | 1.5.1 | **Admin Features and Misc bugs** |  | 32d | 2007-09-28 | 2007-11-12 |  | 0d |  |  | 256h |
| 15 | 1.5.1.1 | Admin - comments made by admin people need to be shown |  | 1w | 2007-09-28 | 2007-10-04 |  | 0d |  | Sima | 40h |
| 16 | 1.5.1.2 | Admin - Coordinator needs to see what models have been assigned to what editor or screener |  | 1w | 2007-10-05 | 2007-10-11 | 15 | 0d |  | Sima | 40h |
| 17 | 1.5.1.3 | Use improved PubMed fetch script on publication submission page |  | 3d | 2007-10-12 | 2007-10-16 | 16 | 0d |  | Sima | 24h |
| 18 | 1.5.1.4 | Do not delete EnvironmentalFactor objects - instead reuse and leave in DB |  | 2d | 2007-10-17 | 2007-10-18 | 17 | 0d |  | Sima | 16h |
| 19 | 1.5.1.5 | Upgrade to a new version of struts |  | 1w | 2007-10-19 | 2007-10-25 | 18 | 0d |  | Sima | 40h |
| 20 | 1.5.1.6 | Editors do not receive assignment emails |  | 1w | 2007-10-26 | 2007-11-01 | 19 | 0d |  | Sima | 40h |
| 21 | 1.5.1.7 | Keyword search shows models that have not been edited-approved |  | 5d | 2007-11-02 | 2007-11-08 | 20 | 0d |  | Sima | 40h |
| 22 | 1.5.1.8 | data conversion and html code result in funny signs in text |  | 2d | 2007-11-09 | 2007-11-12 | 21 | 0d |  | Sima | 16h |
| 23 | 1.5.2 | **EVSTree Application-side work** |  | 63d | 2007-11-13 | 2008-02-07 |  | 0d |  | Sima | 1462h |
| 24 | 1.5.2.1 | **Implementation and Testing** |  | 63d | 2007-11-13 | 2008-02-07 |  | 0d |  | Sima | 958h |
| 25 | 1.5.2.1.1 | Restore the association between organ and diagnosis |  | 3w | 2007-11-13 | 2007-12-03 | 22 | 0d |  | Sima | 120h |
| 26 | 1.5.2.1.2 | Letting a user add and view staining methods that are not part of the vocabulary; affects old and new entries |  | 1w | 2007-12-04 | 2007-12-10 | 25 | 0d |  | Sima [75%] | 30h |
| 27 | 1.5.2.1.3 | Annoyances with EVS organ tree |  | 5w | 2007-12-11 | 2008-01-14 | 26 | 0d |  | Sima [80%] | 160h |
| 28 | 1.5.2.1.4 | Use mouse and rat strains from NCI Thesaurus |  | 2w | 2008-01-15 | 2008-01-28 | 27 | 0d |  | Sima | 80h |
| 29 | 1.5.2.1.5 | Selecting search results in tree causes HTTP 404 Error |  | 3d | 2008-01-29 | 2008-01-31 | 28 | 0d |  | Sima | 24h |
| 30 | 1.5.2.1.6 | Crash - when trying to select search result page crashes |  | 1w | 2008-02-01 | 2008-02-07 | 29 | 0d |  | Sima | 40h |

| ID | WBS | Task | Type | Duration | Start | Finish | Predecessors | Total slack | Free slack | Resources | Work |
| --- | --- | --- | --- | --- | --- | --- | --- | --- | --- | --- | --- |
| 31 | 1.5.3 | **EVSTree - caMOD-side work** |  | 6d | 2008-02-08 | 2008-02-15 |  | 0d |  | Sima | 96h |
| 32 | 1.5.3.1 | Implement new EVSTree changes in caMOD |  | 6d | 2008-02-08 | 2008-02-15 | 30 | 0d |  | Sima | 48h |
| 33 | 1.5.4 | **Remote API / Grid** |  | 35d | 2008-02-18 | 2008-04-04 |  | 0d |  |  | 280h |
| 34 | 1.5.4.1 | Leverage caCORE 3.2 for remote API |  | 1w | 2008-02-18 | 2008-02-22 | 32 | 0d |  | Sima | 40h |
| 35 | 1.5.4.2 | Remote API - Redo API to 1.0 of Tool Kit |  | 2w | 2008-02-25 | 2008-03-07 | 34 | 0d |  | Sima | 80h |
| 36 | 1.5.4.3 | Make caMod available in the grid (production) |  | 1w | 2008-03-10 | 2008-03-14 | 35 | 0d |  | Sima | 40h |
| 37 | 1.5.4.4 | Map API to latest OM (2.4) |  | 2w | 2008-03-17 | 2008-03-28 | 36 | 0d |  | Sima | 80h |
| 38 | 1.5.4.5 | Make only edited-approved models available through API |  | 1w | 2008-03-31 | 2008-04-04 | 37 | 0d |  | Sima | 40h |
| 39 | 1.5.5 | **caMOD - caELMIR Integration Tasks** |  | 28d | 2008-04-07 | 2008-05-14 |  | 0d |  |  |  |
| 40 | 1.5.5.1 | Implement Therapy Screen for caELMIR data |  | 2w | 2008-04-07 | 2008-04-18 | 38 | 0d |  |  |  |
| 44 | 1.5.6 | **Testing** |  | 172d | 2007-10-22 | 2008-06-17 |  | 0d |  |  | 312h |
| 45 | 1.5.6.1 | Deploy iteration on DEV Server |  | 2d | 2008-05-15 | 2008-05-16 |  | 0d |  |  |  |
| 46 | 1.5.6.2 | Test on DEV tier |  | 1w | 2008-05-19 | 2008-05-23 | 45 | 0d |  |  |  |
| 47 | 1.5.6.3 | **Transition Phase** |  | 172d | 2007-10-22 | 2008-06-17 |  | 0d |  |  | 312h |
| 48 | 1.5.6.3.1 | **QA** |  | 10d | 2007-10-22 | 2007-11-02 | 5 | 66d |  | QA | 160h |
| 49 | 1.5.6.3.1.1 | Finalize Testplan |  | 1w | 2007-10-22 | 2007-10-26 | 5 | 66d | 0d | QA | 40h |
| 50 | 1.5.6.3.1.2 | Finalize Test Cases |  | 1w | 2007-10-29 | 2007-11-02 | 49 | 66d |  | QA | 40h |
| 51 | 1.5.6.3.2 | **Deploy** |  | 17d | 2008-05-26 | 2008-06-17 |  | 0d |  |  | 152h |
| 52 | 1.5.6.3.2.1 | **QA Server Deployment** |  | 10d | 2008-05-26 | 2008-06-06 | 46 | 0d |  |  | 80h |
| 53 | 1.5.6.3.2.1.1 | QA Testing |  | 2w | 2008-05-26 | 2008-06-06 |  | 0d |  | QA | 80h |
| 54 | 1.5.6.3.2.2 | **Staging Server Deployment** |  | 5d | 2008-06-09 | 2008-06-13 | 53 | 0d |  |  | 40h |
| 55 | 1.5.6.3.2.2.1 | Staging Testing |  | 1w | 2008-06-09 | 2008-06-13 |  | 0d |  | Ulli | 40h |
| 56 | 1.5.6.3.2.3 | **Production Server Deployment** |  | 2d | 2008-06-16 | 2008-06-17 |  | 0d |  | Sima | 32h |
| 57 | 1.5.6.3.2.3.1 | Production Verification |  | 2d | 2008-06-16 | 2008-06-17 | 55 | 0d |  | Ulli | 16h |
| 58 | 1.5.6.4 | caMOD 2.4 - Closeout | milestone | 0d | 2008-06-17 | 2008-06-17 | 57 | 0d |  |  |  |
